# Pits

Schedule from MS Project, 2011-03-05 to 2011-04-02, 2 hours a day.
Toshiba

## Calendars

- Pits: Mon-Fri 21:00-23:00; Sat 11:00-14:00; Sun off.

## Resources

| Resource |
| --- |
| José Julca |
| Jaime Huarca |
| Willy Veliz |
| Técnico |

## Schedule

| ID | WBS | Task | Duration | Start | Finish | Predecessors | Total slack | Constraint | Resources | Work |
| --- | --- | --- | --- | --- | --- | --- | --- | --- | --- | --- |
| 1 | 1 | **Piloto BI PITS** | 27.5d | 2011-03-05 11:00 | 2011-04-02 14:00 |  | 0d |  |  | 134h |
| 2 | 1.1 | Reunión de inicio | 3h | 2011-03-05 11:00 | 2011-03-05 23:00 |  | 0d | finish no earlier than 2011-03-05 23:00 | José Julca; Jaime Huarca; Willy Veliz | 9h |
| 3 | 1.2 | **Definición del piloto** | 6.5d | 2011-03-07 21:00 | 2011-03-12 14:00 | 2 | 0d |  |  | 29h |
| 4 | 1.2.1 | Definición de entidades y vistas | 2h | 2011-03-07 21:00 | 2011-03-07 23:00 |  | 0d |  | José Julca; Jaime Huarca | 4h |
| 5 | 1.2.2 | Revisión de entidades y vistas | 2h | 2011-03-08 21:00 | 2011-03-08 23:00 | 4 | 0d |  | José Julca; Jaime Huarca | 4h |
| 6 | 1.2.3 | Análisis de la base de datos | 2h | 2011-03-09 21:00 | 2011-03-09 23:00 | 5 | 0d |  | José Julca; Jaime Huarca | 4h |
| 7 | 1.2.4 | Diseno del modelo de datos | 2h | 2011-03-10 21:00 | 2011-03-10 23:00 | 6 | 0d |  | José Julca; Jaime Huarca | 4h |
| 8 | 1.2.5 | Diseno del modelo estrella | 2h | 2011-03-11 21:00 | 2011-03-11 23:00 | 7 | 0d |  | José Julca; Jaime Huarca | 4h |
| 9 | 1.2.6 | Revisión del modelo estrella | 3h | 2011-03-12 11:00 | 2011-03-12 14:00 | 8 | 0d |  | José Julca; Jaime Huarca; Willy Veliz | 9h |
| 10 | 1.3 | **ETL** | 6.5d | 2011-03-14 21:00 | 2011-03-19 14:00 | 3 | 0d |  |  | 37h |
| 11 | 1.3.1 | Preparación del ambiente de pruebas | 10h | 2011-03-14 21:00 | 2011-03-18 23:00 |  | 1.5d |  | Técnico | 10h |
| 12 | 1.3.2 | Diseno del proceso ETL | 10h | 2011-03-14 21:00 | 2011-03-18 23:00 |  | 0d |  | José Julca; Jaime Huarca | 20h |
| 13 | 1.3.3 | Ejecución del proceso ETL | 3h | 2011-03-19 11:00 | 2011-03-19 14:00 | 12 | 0d |  | José Julca; Jaime Huarca; Técnico | 7h |
| 14 | 1.4 | **Desarrollo de las pantallas** | 5d | 2011-03-21 21:00 | 2011-03-25 23:00 | 10 | 0d |  |  | 20h |
| 15 | 1.4.1 | Desarrollo del dashboard ENTREGA | 10h | 2011-03-21 21:00 | 2011-03-25 23:00 |  | 0d |  | José Julca | 10h |
| 16 | 1.4.2 | Desarrollo del dashboard PROCESO | 10h | 2011-03-21 21:00 | 2011-03-25 23:00 |  | 0d |  | Jaime Huarca | 10h |
| 17 | 1.5 | **Presentación preliminar** | 1.5d | 2011-03-26 11:00 | 2011-03-26 14:00 | 14 | 0d |  |  | 9h |
| 18 | 1.5.1 | Presentación preliminar | 3h | 2011-03-26 11:00 | 2011-03-26 14:00 |  | 0d |  | José Julca; Jaime Huarca; Willy Veliz | 9h |
| 19 | 1.6 | **Ajustes y optimización** | 5d | 2011-03-28 21:00 | 2011-04-01 23:00 | 17 | 0d |  |  | 22h |
| 20 | 1.6.1 | Rediseno modelo estrella | 2h | 2011-03-28 21:00 | 2011-03-28 23:00 |  | 0d |  | José Julca; Jaime Huarca | 4h |
| 21 | 1.6.2 | Rediseno del proceso ETL | 4h | 2011-03-29 21:00 | 2011-03-30 23:00 | 20 | 0d |  | José Julca; Jaime Huarca | 8h |
| 22 | 1.6.3 | Re-ejecuión del proceso ETL | 2h | 2011-03-31 21:00 | 2011-03-31 23:00 | 21 | 0d |  | José Julca; Jaime Huarca; Técnico | 6h |
| 23 | 1.6.4 | Rediseno de pantallas | 2h | 2011-04-01 21:00 | 2011-04-01 23:00 | 22 | 0d |  | José Julca; Jaime Huarca | 4h |
| 24 | 1.7 | **Presentación final** | 1.5d | 2011-04-02 11:00 | 2011-04-02 14:00 | 19 | 0d |  |  | 8h |
| 25 | 1.7.1 | Presentación final | 2h | 2011-04-02 11:00 | 2011-04-02 13:00 |  | 0d |  | José Julca; Jaime Huarca; Willy Veliz | 6h |
| 26 | 1.7.2 | Propuesta de trabajo de tesis | 1h | 2011-04-02 13:00 | 2011-04-02 14:00 | 25 | 0d |  | José Julca; Jaime Huarca | 2h |
